# ESD 改版

Schedule from a web Gantt chart, 2025-11-03 to 2025-11-03.
Every day is a working day

## Schedule

| ID | WBS | Task | Duration | Start | Finish |
| --- | --- | --- | --- | --- | --- |
| 2 | 1 | Kickoff | 1d | 2025-11-03 | 2025-11-03 |
